How a schedule from an exported table changed from version to version. A marks actual dates.

## Version 1 (saved 2026-06-12)

Note of the change: Update outage data · 2026-06-12T11:24:07.400Z

| ID | Task | Start | Finish |
| --- | --- | --- | --- |
| 1 | Plant Shutdown / Cooling | 2026-05-31T22:00 | 2026-06-03T19:00 |
| 1.1 | Plant shutdown | 2026-05-31T22:00 | 2026-05-31T23:00 |
| 1.2 | Plant cooling | 2026-05-31T23:00 | 2026-06-03T19:00 |
| 2 | BOP | 2026-05-31T22:00 | 2026-06-19T16:00 |
| 2.1 | Condensate & Feedwater Draining | 2026-06-03T22:00 | 2026-06-04T07:00 |
| 2.2 | SSG Draining | 2026-05-31T23:00 | 2026-06-04T07:00 |
| 3 | Vac-Cent | 2026-05-31T23:00 | 2026-06-07T13:00 |
| 3.1 | Removal of pumps | 2026-05-31T23:00 | 2026-06-01T07:00 |
| 3.2 | AF1MAJ62AP001 - Replace shaft | 2026-06-03T08:00 | 2026-06-07T05:00 |
| 3.3 | AF1MAJ61AP001 | 2026-06-03T08:00 | 2026-06-06T17:00 |
| 3.4 | Replace pumps | 2026-06-07T05:00 | 2026-06-07T13:00 |
| 3.5 | Transport to 124 Snapper Road, Wadeville, Germiston | 2026-06-01T13:00 | 2026-06-03T08:00 |
| 3.6 | Transport to site | 2026-06-06T17:00 | 2026-06-07T05:00 |
| 4 | BTS-GSB Services (12 Months) | 2026-05-31T23:00 | 2026-06-05T08:00 |
| 4.1 | Isolate (Night) | 2026-05-31T23:00 | 2026-06-01T00:00 |
| 4.2 | Complete safety induction if needed | 2026-06-01T09:00 | 2026-06-01T11:00 |
| 4.3 | Remove burner from Boiler | 2026-06-01T11:00 | 2026-06-01T16:00 |
| 4.4 | Open/remove boiler doors for boiler to cool down | 2026-06-01T15:00 | 2026-06-01T16:00 |
| 4.5 | Clean boiler with high pressure jet cleaner | 2026-06-02T07:00 | 2026-06-03T15:00 |
| 4.6 | Strip burner completely for cleaning & inspection | 2026-06-02T07:00 | 2026-06-03T15:00 |
| 4.7 | Cut gaskets & close boiler doors | 2026-06-02T07:00 | 2026-06-03T15:00 |
| 4.8 | Re-assemble burner and replace service items | 2026-06-04T07:00 | 2026-06-04T08:00 |
| 4.9 | Install burner on Aux boiler | 2026-06-04T07:00 | 2026-06-04T08:15 |
| 4.10 | Re-connect all wiring on burner | 2026-06-04T07:00 | 2026-06-04T08:30 |
| 4.11 | Pre-commissioning testing | 2026-06-04T07:00 | 2026-06-04T15:00 |
| 4.12 | Test burner & boiler safety devices | 2026-06-04T07:00 | 2026-06-04T15:00 |
| 4.13 | Set safety devices accordingly | 2026-06-04T07:00 | 2026-06-04T15:00 |
| 5 | April Konstruksie | 2026-06-01T14:00 | 2026-06-16T07:00 |
| 5.1 | Reinforcement of Ullage tank support system foundation | 2026-06-02T07:00 | 2026-06-05T07:00 |
| 5.2 | Concrete work at B44 | 2026-06-05T07:00 | 2026-06-08T07:00 |
| 5.3 | Concrete work on steam line drain manholes | 2026-06-08T07:00 | 2026-06-11T07:00 |
| 5.4 | Concrete repairs on the gland steam boiler manhole | 2026-06-04T07:00 | 2026-06-14T07:00 |
| 5.5 | Concrete works at HTF Pumps | 2026-06-01T14:00 | 2026-06-16T07:00 |
| 6 | Applus - Pressure Vessels Inspections | 2026-06-04T07:00 | 2026-06-12T23:00 |
| 6.1 | AF1WSX10BC001 - HTF / Salt Heat Exchanger | 2026-06-06T00:00 | 2026-06-06T01:00 |
| 6.2 | AF1WSX10BC002 - HTF / Salt Heat Exchanger | 2026-06-06T00:00 | 2026-06-06T02:00 |
| 6.3 | AF1WSX10BC003 - HTF / Salt Heat Exchanger | 2026-06-06T00:00 | 2026-06-06T03:00 |
| 6.4 | AF1WSX10BC004 - HTF / Salt Heat Exchanger | 2026-06-06T00:00 | 2026-06-06T04:00 |
| 6.5 | AF1WSX10BC005 - HTF / Salt Heat Exchanger | 2026-06-06T00:00 | 2026-06-06T05:00 |
| 6.6 | AF1WSX10BC006 - HTF / Salt Heat Exchanger | 2026-06-06T00:00 | 2026-06-06T06:00 |
| 6.7 | AF1WSX20BC001 - HTF / Salt Heat Exchanger | 2026-06-06T00:00 | 2026-06-06T07:00 |
| 6.8 | AF1WSX20BC002 - HTF / Salt Heat Exchanger | 2026-06-06T00:00 | 2026-06-06T08:00 |
| 6.9 | AF1WSX20BC003 - HTF / Salt Heat Exchanger | 2026-06-06T00:00 | 2026-06-06T09:00 |
| 6.10 | AF1WSX20BC004 - HTF / Salt Heat Exchanger | 2026-06-06T00:00 | 2026-06-07T01:00 |
| 6.11 | AF1WSX20BC005 - HTF / Salt Heat Exchanger | 2026-06-06T00:00 | 2026-06-07T02:00 |
| 6.12 | AF1WSX20BC006 - HTF / Salt Heat Exchanger | 2026-06-06T00:00 | 2026-06-07T03:00 |
| 6.13 | AF1JD20AT001 - HTF Filter | 2026-06-08T10:00 | 2026-06-08T11:00 |
| 6.14 | AF1JD22AT001 - HTF Filter | 2026-06-08T11:00 | 2026-06-08T12:00 |
| 6.15 | AF1JD24AT001 - HTF Filter | 2026-06-08T12:00 | 2026-06-08T13:00 |
| 6.16 | AF1JD26AT001 - HTF Filter | 2026-06-08T13:00 | 2026-06-08T14:00 |
| 6.17 | AF1JD28AT001 - HTF Filter | 2026-06-08T14:00 | 2026-06-08T15:00 |
| 6.18 | AF1JD30AT001 - HTF Filter | 2026-06-08T15:00 | 2026-06-08T16:00 |
| 6.19 | AF1SG43TK001 - FFS Turbine | 2026-06-07T00:00 | 2026-06-07T00:00 |
| 6.20 | AF1SG47TK001 - FFS Main HTF | 2026-06-07T00:00 | 2026-06-07T00:00 |
| 6.21 | AF1QH_40AC001 - Steam Generator / Boiler | 2026-06-07T00:00 | 2026-06-07T03:00 |
| 6.22 | AF1QF30BB001 - Air Tank (Service) | 2026-06-07T00:00 | 2026-06-07T00:00 |
| 6.23 | AF1QF59B001 - Air Tank (Instrument) | 2026-06-07T00:00 | 2026-06-07T00:00 |
| 6.24 | AF1QF54AT001 - Air Dryer | 2026-06-07T00:00 | 2026-06-07T00:00 |
| 6.25 | AF1QF50AT001 - Air Dryer | 2026-06-07T00:00 | 2026-06-07T00:00 |
| 6.26 | AD1HAH10BB001 - Continuous Blowdown Tank | 2026-06-08T12:00 | 2026-06-08T13:00 |
| 6.27 | AF1LAB10BB001 - Deaerator | 2026-06-08T09:00 | 2026-06-08T10:28 |
| 6.28 | AD1HAC10AC001 - Preheater | 2026-06-08T10:28 | 2026-06-08T12:28 |
| 6.29 | AD1HAC20AC001 - Preheater | 2026-06-08T12:28 | 2026-06-08T14:28 |
| 6.30 | AD1HAH20BB001 - Intermittent Purge Tank | 2026-06-08T14:28 | 2026-06-08T16:28 |
| 6.31 | AF1QH52AC001 - Superheater | 2026-06-09T07:28 | 2026-06-09T09:28 |
| 6.32 | AF1QH10BB001 - Gland Steam Thermal Deaerator | 2026-06-04T07:00 | 2026-06-09T12:01 |
| 6.33 | AD1JE40BB001 - Overflow Low Pressure Tank | 2026-06-09T12:01 | 2026-06-09T14:01 |
| 6.34 | AD1JR22BB001 - HTF Condensate Tank (Ulage System) | 2026-06-09T02:00 | 2026-06-09T04:00 |
| 6.35 | AF1JR50BB001 - PSV Discharge (Ulage System) | 2026-06-09T19:00 | 2026-06-09T21:00 |
| 6.36 | AD1JR42BB001 - VOC condensate (Ullage System) | 2026-06-09T21:00 | 2026-06-09T23:00 |

| ID | Task | Start | Finish |
| --- | --- | --- | --- |
| 6.37 | AF1LCC10BC001 - LP Heater 1 | 2026-06-05T12:00 | 2026-06-05T12:15 |
| 6.38 | AF1LCC10BC002 - LP 1 Level Tank | 2026-06-06T15:00 | 2026-06-06T15:15 |
| 6.39 | AF1LCC20BC001 - LP Heater 2 | 2026-06-05T12:15 | 2026-06-05T12:30 |
| 6.40 | AF1LCC20BC002 - LP 2 Level Tank | 2026-06-09T07:00 | 2026-06-09T07:15 |
| 6.41 | AF1LCC30BC001 - LP Heater 3 | 2026-06-05T12:30 | 2026-06-05T12:45 |
| 6.42 | AF1LCC20BC002 - LP 3 Level Tank | 2026-06-06T15:15 | 2026-06-06T15:30 |
| 6.43 | AF1LCC50BC001 - HP Heater 5 | 2026-06-05T12:45 | 2026-06-05T13:00 |
| 6.44 | AF1LCC20BC002 - HP 5 Level Tank | 2026-06-05T13:00 | 2026-06-05T14:00 |
| 6.45 | AF1LCC60BC001 - HP Heater 6 | 2026-06-05T13:00 | 2026-06-05T13:00 |
| 6.46 | AF1LCC60BC002 - HP 6 Level Tank | 2026-06-06T15:45 | 2026-06-06T16:00 |
| 6.47 | AF1LEV50BB001 - Mist Eliminator | 2026-06-04T07:00 | 2026-06-08T11:00 |
| 6.48 | AF1HAN01BB001 - HP Continuous Drain Tank | 2026-06-04T07:00 | 2026-06-07T00:00 |
| 6.49 | AF1HAN4001BB001 - LP Continuous Drain Tank | 2026-06-04T07:00 | 2026-06-07T00:00 |
| 6.50 | AD1JE30BB001 - Overflow High Pressure Tank | 2026-06-06T00:00 | 2026-06-09T15:00 |
| 6.51 | AD1JE20BB001 - Expansion Tank | 2026-06-06T00:00 | 2026-06-09T15:00 |
| 6.52 | AF1WSX10BB001 - Salt Drain Tank | 2026-06-11T20:00 | 2026-06-11T21:00 |
| 6.53 | AF1EG16BB001 - Fuel Oil Tank | 2026-06-11T21:00 | 2026-06-11T22:00 |
| 6.54 | AF1HAD10AC001 - Evaporator | 2026-06-11T22:00 | 2026-06-11T23:00 |
| 6.55 | AF1HAD20AC001 - Evaporator | 2026-06-11T23:00 | 2026-06-12T00:00 |
| 6.56 | AF1HAF10AC001 - Superheater | 2026-06-12T00:00 | 2026-06-12T01:00 |
| 6.57 | AFHAF20AC001 - Superheater | 2026-06-12T01:00 | 2026-06-12T02:00 |
| 6.58 | AF1HAG10AA001 - Reheater | 2026-06-12T02:00 | 2026-06-12T03:00 |
| 6.59 | AF1HAG20AA001 - Reheater | 2026-06-12T03:00 | 2026-06-12T04:00 |
| 6.60 | AD1JF06BG001 - HTF Boiler | 2026-06-12T19:00 | 2026-06-12T20:00 |
| 6.61 | AD1JF05BG001 - HTF Boiler | 2026-06-12T20:00 | 2026-06-12T21:00 |
| 6.62 | AF1JE08AT001 - Overflow Pump Filter | 2026-06-12T21:00 | 2026-06-12T22:00 |
| 6.63 | AF1JE10AT001 - Overflow Pump Filter | 2026-06-12T22:00 | 2026-06-12T23:00 |
| 6.64 | AF1JR20BC001 - Ullage Stage 2 Heat Exchanger | 2026-06-06T00:00 | 2026-06-06T00:00 |
| 6.65 | AF1JR40BC001 - Ullage Stage 2 Heat Exchanger | 2026-06-06T00:00 | 2026-06-06T00:00 |
| 6.66 | AF1GA18BB001 - Hydrostatic Tank | 2026-06-06T00:00 | 2026-06-06T02:00 |
| 6.67 | AF1GA56BB001 - Hydrostatic Tank | 2026-06-06T16:00 | 2026-06-06T19:00 |
| 6.68 | MAV36BB010 - FFS Turbine Accumulator | 2026-06-07T00:00 | 2026-06-07T00:00 |
| 6.69 | MAV35BB010 - Control Oil Pressure Accumulator | 2026-06-07T00:00 | 2026-06-07T03:00 |
| 7 | Auma - Services of Actuators | 2026-06-04T07:00 | 2026-06-12T06:00 |
| 7.1 | HAH33AA151 | 2026-06-04T07:00 | 2026-06-04T16:00 |
| 7.2 | HAH13AA151 | 2026-06-04T07:00 | 2026-06-04T16:00 |
| 7.3 | HAF10AA152 | 2026-06-04T07:00 | 2026-06-04T16:00 |
| 7.4 | HAA20AA151 | 2026-06-04T07:00 | 2026-06-04T16:00 |
| 7.5 | Transport to Nuffield, Springs | 2026-06-05T07:00 | 2026-06-05T19:00 |
| 7.6 | Service of Actuators | 2026-06-06T07:00 | 2026-06-08T16:00 |
| 7.7 | Transport back to site | 2026-06-09T07:00 | 2026-06-10T09:00 |
| 7.8 | Replace actuators | 2026-06-10T21:00 | 2026-06-11T09:00 |
| 7.9 | HAH36AA151 - Replace screen card | 2026-06-11T21:00 | 2026-06-12T00:00 |
| 7.10 | HAG20AA152 - Replace screen card | 2026-06-12T00:00 | 2026-06-12T03:00 |
| 7.11 | HAG10AA152 - Replace screen card | 2026-06-12T03:00 | 2026-06-12T06:00 |
| 8 | VEGA-LP Overflow Tank Level Transmitter - AF1JE_40CL001 | 2026-06-03T19:00 | 2026-06-12T20:00 |
| 8.1 | Draining (Night before) | 2026-06-03T19:00 | 2026-06-04T04:00 |
| 8.2 | Open Manhole for inspections | 2026-06-04T04:00 | 2026-06-04T08:00 |
| 8.3 | Removal | 2026-06-04T04:00 | 2026-06-04T12:00 |
| 8.4 | Transport to Lenseria | 2026-06-05T00:00 | 2026-06-05T12:00 |
| 8.5 | Inspections and repairs | 2026-06-06T00:00 | 2026-06-11T00:00 |
| 8.6 | Transport to site | 2026-06-11T00:00 | 2026-06-11T12:00 |
| 8.7 | Replace | 2026-06-12T00:00 | 2026-06-12T08:00 |
| 8.8 | Recovery | 2026-06-12T08:00 | 2026-06-12T20:00 |
| 9 | Enserve - Refurbishment of Valves | 2026-06-01T19:00 | 2026-06-13T10:48 |
| 9.1 | Overflow NRV AF1JE11AP001 - Isolate & Draining (Night) | 2026-06-01T19:00 | 2026-06-02T03:00 |
| 9.2 | AF1JE11AP001 - Cut | 2026-06-02T09:00 | 2026-06-03T11:00 |
| 9.3 | AF1JE11AP001 - Replace | 2026-06-03T11:00 | 2026-06-06T00:00 |
| 9.4 | AF1JE11AP001 - AIA Inspections | 2026-06-06T00:00 | 2026-06-06T00:00 |
| 9.5 | PGB pumps suction line PSV AF1PGB80AA201 - Remove from plant | 2026-06-08T10:00 | 2026-06-08T11:00 |
| 9.6 | PGB pumps suction line PSV - Disassemble & Clean | 2026-06-08T11:00 | 2026-06-09T10:00 |
| 9.7 | PGB pumps suction line PSV - Assess & Measure soft spares | 2026-06-09T10:00 | 2026-06-09T11:00 |
| 9.8 | PGB pumps suction line PSV - Lapping of seats | 2026-06-09T11:00 | 2026-06-09T19:00 |
| 9.9 | PGB pumps suction line PSV - Replace | 2026-06-10T07:00 | 2026-06-10T10:00 |
| 9.10 | AF1HAF20AA502 - Remove valve / Welding | 2026-06-04T07:00 | 2026-06-05T08:00 |
| 9.11 | AF1HAF10AA501 - Disassemble & Clean | 2026-06-06T00:00 | 2026-06-06T00:00 |
| 9.12 | AF1HAF10AA502 - Close Valve | 2026-06-09T07:00 | 2026-06-10T07:00 |
| 9.13 | HP header sealing steam PRV AF1MAW15AA201 | 2026-06-03T08:00 | 2026-06-04T16:00 |
| 9.14 | SSG evaporator 1 PRV (AF1HAD10AA201/202/203) | 2026-06-06T00:00 | 2026-06-11T18:00 |
| 9.15 | SSG feedwater NRV AF1HAA10AA503 - Refurbishment | 2026-06-06T00:00 | 2026-06-12T20:24 |

| ID | Task | Start | Finish |
| --- | --- | --- | --- |
| 9.16 | SSG feedwater NRV AF1HAA20AA503 - Refurbishment | 2026-06-06T00:00 | 2026-06-13T10:48 |
| 10 | Fire Equip - Execution of SBX-9 and SBX-8 (Removal of Cylinders) | 2026-06-04T07:00 | 2026-06-19T07:00 |
| 10.1 | SBX-9 Minor non-conformances | 2026-06-04T07:00 | 2026-06-04T11:00 |
| 10.2 | SBX-8 Removal of gas suppression cylinders | 2026-06-04T07:00 | 2026-06-04T11:00 |
| 10.3 | Execution of SBX-8 reinstall of gas suppression cylinders | 2026-06-15T07:00 | 2026-06-19T07:00 |
| 10.4 | Service gas suppression systems (SLA) | 2026-06-15T07:00 | 2026-06-19T07:00 |
| 11 | BI Engineering | 2026-05-31T22:00 | 2026-06-16T04:00 |
| 11.1 | MAW20AA181 - Valve passing | 2026-05-31T22:00 | 2026-06-01T01:00 |
| 11.2 | MAW20AA182 - Valve passing | 2026-06-01T01:00 | 2026-06-01T04:00 |
| 11.3 | HAN15AA181 - Actuator leaking | 2026-06-01T08:00 | 2026-06-01T15:00 |
| 11.4 | HAN11AA181 - Actuator Loose, new mounting required | 2026-06-01T08:00 | 2026-06-01T15:00 |
| 11.5 | Ship to BI Engineering JHB | 2026-06-02T07:00 | 2026-06-03T09:00 |
| 11.6 | Repair Valves | 2026-06-03T09:00 | 2026-06-10T00:00 |
| 11.7 | Ship valves back to Site + Replace | 2026-06-10T00:00 | 2026-06-12T09:00 |
| 11.8 | Site Establishment - Complete site induction | 2026-06-04T08:00 | 2026-06-04T09:00 |
| 11.9 | Strip, Clean & Repair HP Valve AF1LBP10AA001 | 2026-06-06T00:00 | 2026-06-06T00:00 |
| 11.10 | Strip, Clean & Repair LP Valve AF1LBS10AA001 | 2026-06-08T07:00 | 2026-06-08T09:00 |
| 11.11 | Replace packing - HAA10AA001 | 2026-06-05T07:00 | 2026-06-09T10:00 |
| 11.12 | Replace packing - HAA20AA001 | 2026-06-05T07:00 | 2026-06-10T06:00 |
| 11.13 | Replace packing - HAA10AA002 | 2026-06-05T07:00 | 2026-06-11T02:00 |
| 11.14 | Replace packing - HAA20AA002 | 2026-06-05T07:00 | 2026-06-12T02:00 |
| 12 | SIEMENS ENERGY - Unloaded side thrust bearing sensor replacement | 2026-06-10T07:00 | 2026-06-13T03:00 |
| 12.1 | Safety Induction | 2026-06-10T07:00 | 2026-06-10T08:00 |
| 12.2 | Site Establishment | 2026-06-10T08:00 | 2026-06-10T10:00 |
| 12.3 | PTW | 2026-06-10T08:00 | 2026-06-10T09:00 |
| 12.4 | Remove Barring Gear & Front Pedestal Outer Instruments | 2026-06-10T09:00 | 2026-06-10T12:00 |
| 12.5 | Loosen Barring Gear Hydraulic Piping | 2026-06-11T07:00 | 2026-06-11T08:00 |
| 12.6 | Loosen & Remove Coupling Guard Top Half | 2026-06-11T08:00 | 2026-06-11T09:00 |
| 12.7 | Loosen & Remove Front Pedestal Top Cover | 2026-06-11T09:00 | 2026-06-11T12:00 |
| 12.8 | Remove Faulty Axial Displacement Probe | 2026-06-11T12:00 | 2026-06-11T13:00 |
| 12.9 | Install New Axial Displacement Probe | 2026-06-11T13:00 | 2026-06-11T14:00 |
| 12.10 | Set Turbine On Thrust & Set Axial Displacement Probe | 2026-06-11T14:00 | 2026-06-11T18:00 |
| 12.11 | Replace Front Pedestal Top Cover | 2026-06-12T07:00 | 2026-06-12T11:00 |
| 12.12 | Replace Coupling Guard Top Half | 2026-06-12T11:00 | 2026-06-12T12:00 |
| 12.13 | Replace Barring Gear Hydraulic Piping | 2026-06-12T12:00 | 2026-06-12T13:00 |
| 12.14 | Replace Pedestal & Barring Gear Instrumentation | 2026-06-12T12:00 | 2026-06-12T14:00 |
| 12.15 | Clear PTW | 2026-06-12T14:00 | 2026-06-12T15:00 |
| 12.16 | Place Unit on Barring | 2026-06-12T15:00 | 2026-06-12T15:00 |
| 12.17 | Travel Back to Home Base | 2026-06-12T15:00 | 2026-06-13T03:00 |
| 13 | Steam House - Pressure test | 2026-06-09T08:00 | 2026-06-13T15:00 |
| 13.1 | Complete safety induction | 2026-06-09T08:00 | 2026-06-09T10:00 |
| 13.2 | Assemble pressure test equipment | 2026-06-09T10:00 | 2026-06-09T17:00 |
| 13.3 | Pressure test boiler | 2026-06-10T08:00 | 2026-06-13T08:00 |
| 13.4 | Pressure test air receiver 10 | 2026-06-10T08:00 | 2026-06-13T08:00 |
| 13.5 | Pressure test air receiver 15 | 2026-06-10T08:00 | 2026-06-13T08:00 |
| 13.6 | Disassemble pressure test equipment | 2026-06-13T08:00 | 2026-06-13T15:00 |
| 14 | HyDac - Lube oil tank | 2026-06-08T09:00 | 2026-06-19T16:00 |
| 14.1 | Drain 10 000l tank into provided tanks | 2026-06-08T09:00 | 2026-06-09T15:00 |
| 14.2 | Inspect tank to determine if cleaning needed | 2026-06-10T07:00 | 2026-06-10T09:00 |
| 14.3 | Clean tank if needed | 2026-06-10T09:00 | 2026-06-10T16:00 |
| 14.4 | Fill 10000l reservoir with new oil | 2026-06-11T07:00 | 2026-06-11T16:00 |
| 14.5 | Blank off and loop pipes to circulate oil | 2026-06-12T07:00 | 2026-06-18T16:00 |
| 14.6 | Remove loop hoses and restore system | 2026-06-19T07:00 | 2026-06-19T16:00 |
| 15 | Afrox | 2026-06-09T08:00 | 2026-06-11T19:00 |
| 15.1 | Induction | 2026-06-09T08:00 | 2026-06-09T10:00 |
| 15.2 | Vessel T81A - Replace safety valves on supply line | 2026-06-10T09:00 | 2026-06-10T13:00 |
| 15.3 | Vessel T81B - Replace safety valves on supply line | 2026-06-10T13:00 | 2026-06-10T17:00 |
| 15.4 | Vessel T81C - Replace safety valves on supply line and PGB suction line | 2026-06-11T07:00 | 2026-06-11T19:00 |
| 15.5 | AF1QJA93AA501 - Fault finding on offloading valve | 2026-06-11T17:00 | 2026-06-11T18:00 |
| 15.6 | Nitrogen vaporiser 3 - external leak | 2026-06-11T18:00 | 2026-06-11T19:00 |
| 16 | 132kV Isolated / 6.6 Switchgear Maintenance | 2026-06-05T09:00 | 2026-06-13T13:30 |
| 16.1 | 132kV Isolations | 2026-06-05T09:00 | 2026-06-05T10:15 |
| 16.2 | 132kV De-isolations | 2026-06-13T12:30 | 2026-06-13T13:30 |
| 16.3 | Eskom Outage / Paulputs Substation Shutdown | 2026-06-08T07:00 | 2026-06-12T16:00 |
| 16.4 | MEB AF1BFT10 - Switchgear Maintenance | 2026-06-05T10:15 | 2026-06-13T12:30 |
| 16.5 | AF1BB02 Incomer Service | 2026-06-07T07:00 | 2026-06-07T16:00 |
| 16.6 | Main BAT10 - Switchgear Maintenance | 2026-06-06T00:00 | 2026-06-07T01:00 |
| 16.7 | Aux-BBT10 - OLTC TAPCON Service | 2026-06-08T07:00 | 2026-06-09T10:58 |
| 16.8 | WTP AF1BFT20 - Switchgear Maintenance | 2026-06-07T07:00 | 2026-06-07T13:00 |
| 16.9 | ACC AF1BBA30 - Switchgear Maintenance | 2026-06-02T16:00 | 2026-06-02T16:30 |

| ID | Task | Start | Finish |
| --- | --- | --- | --- |
| 16.10 | TES AF1BBA40 - Switchgear Maintenance | 2026-06-02T15:30 | 2026-06-02T16:00 |
| 16.11 | TES AF1BBA50 - Switchgear Maintenance | 2026-06-02T16:30 | 2026-06-02T17:00 |
| 16.12 | TES-AF1BBA60 - Switchgear Maintenance | 2026-06-02T17:00 | 2026-06-02T17:30 |
| 17 | HT RAMS - Testing & Maintenance | 2026-06-01T11:00 | 2026-06-07T00:00 |
| 17.1 | 15kV SF6 Vacuum Circuit Breaker | 2026-06-03T08:00 | 2026-06-07T00:00 |
| 17.2 | 15kV Vacuum Circuit Breaker isolator | 2026-06-03T08:00 | 2026-06-07T00:00 |
| 17.3 | 132kV SF6 Circuit Breaker | 2026-06-07T00:00 | 2026-06-07T00:00 |
| 17.4 | 132kV Isolator | 2026-06-07T00:00 | 2026-06-07T00:00 |
| 17.5 | 132kV, 15kV, 6.6kV Current Transformers | 2026-06-07T00:00 | 2026-06-07T00:00 |
| 17.6 | 132kV, 15kV, 6.6kV Voltage Transformers | 2026-06-07T00:00 | 2026-06-07T00:00 |
| 17.7 | Solar Field Switchgear Maintenance | 2026-06-02T12:53 | 2026-06-02T15:30 |
| 17.8 | Feedwater Switchgear Maintenance | 2026-06-01T11:00 | 2026-06-02T17:45 |
| 17.9 | HTF Switchgear Maintenance | 2026-06-01T13:00 | 2026-06-02T12:53 |
| 17.10 | Bayont Cape - Cleaning of Busbars | 2026-06-08T10:00 | 2026-06-13T07:00 |
| 18 | DCS Correctives | 2026-06-01T07:00 | 2026-06-19T07:00 |
| 18.1 | Yokogawa - Site Establishment & Windows Environment | 2026-06-08T10:00 | 2026-06-08T16:00 |
| 18.2 | Windows environment - Centum patching | 2026-06-09T07:00 | 2026-06-09T16:00 |
| 18.3 | FCS Inspections | 2026-06-11T08:00 | 2026-06-12T17:00 |
| 18.4 | D20 battery replacement | 2026-06-01T07:00 | 2026-06-04T10:00 |
| 18.5 | Cleaning of servers and stations | 2026-06-01T07:00 | 2026-06-08T16:00 |
| 18.6 | Server failover checks | 2026-06-01T07:00 | 2026-06-08T16:00 |
| 18.7 | Generator signals recovery | 2026-06-08T07:00 | 2026-06-12T16:00 |
| 18.8 | Checking of active simulations | 2026-06-15T07:00 | 2026-06-19T07:00 |
| 19 | Environmental | 2026-05-31T23:00 | 2026-06-13T17:00 |
| 19.1 | Reservoir Cleaning - April Konstruksie | 2026-05-31T23:00 | 2026-06-07T00:00 |
| 19.2 | Cleaning of heat exchangers | 2026-06-01T09:00 | 2026-06-13T17:00 |
| 19.3 | Cleaning of cooling tower | 2026-06-04T07:00 | 2026-06-04T14:16 |
| 19.4 | Cleaning of raw water tank | 2026-06-03T09:00 | 2026-06-03T12:00 |
| 20 | Mechanical Correctives | 2026-06-01T14:00 | 2026-06-15T20:00 |
| 20.1 | AF1LBA10CP001 Condensate pot leaking | 2026-06-01T14:00 | 2026-06-04T15:00 |
| 20.2 | LP Drain Tank - AF1HAN40BB001 | 2026-06-02T09:00 | 2026-06-08T16:00 |
| 20.3 | HP Drain Tank - AF1HAN01BB001 | 2026-06-02T09:00 | 2026-06-09T08:00 |
| 20.4 | Deaerator - AF1LAB10BB001 | 2026-06-08T07:00 | 2026-06-09T09:00 |
| 20.5 | Condensate Tank - AF1LCA01BB001 | 2026-06-04T08:00 | 2026-06-09T10:00 |
| 20.6 | Mist eliminator | 2026-06-02T09:00 | 2026-06-09T11:00 |
| 20.7 | Continuous Purge Tank - AF1HAH10BB001 | 2026-06-04T08:00 | 2026-06-09T12:00 |
| 20.8 | Intermittent Purge Tank - AF1HAH20BB001 | 2026-06-04T08:00 | 2026-06-09T13:00 |
| 20.9 | Salt drain tank - leaking | 2026-06-07T05:00 | 2026-06-10T07:00 |
| 20.10 | JS15AA181 Valve - leaking | 2026-06-08T07:00 | 2026-06-08T15:00 |
| 20.11 | SSG Drain valve leak HTF | 2026-06-13T07:00 | 2026-06-14T16:00 |
| 20.12 | Replace steam traps | 2026-06-02T07:00 | 2026-06-03T09:00 |
| 20.13 | AF1HAF10AA601 Gate valve HO | 2026-06-03T09:00 | 2026-06-03T17:00 |
| 20.14 | Pipe Displaced from Support | 2026-06-12T06:00 | 2026-06-15T20:00 |
| 21 | I&C Correctives | 2026-06-01T13:00 | 2026-06-09T15:00 |
| 21.1 | Replace regulator - QFB10A430 | 2026-06-03T08:00 | 2026-06-03T16:00 |
| 21.2 | Install actuator - AF1JB01AA102 | 2026-06-01T13:00 | 2026-06-03T20:00 |
| 21.3 | Replace regulator - AF1JR80AA001 | 2026-06-02T17:00 | 2026-06-02T18:00 |
| 21.4 | Replace Thermocouples - AF1MAC10CT040/041/042 | 2026-06-09T07:00 | 2026-06-09T15:00 |
| 21.5 | Testing of generator water leak detectors | 2026-06-09T07:00 | 2026-06-09T15:00 |
| 22 | Electrical Correctives / Preventives | 2026-06-03T19:00 | 2026-06-11T09:00 |
| 22.1 | AF1MAV25AD110-M01 - Turbine motor inspection | 2026-06-04T07:00 | 2026-06-04T11:00 |
| 22.2 | AF1MAA16AH120 Casing Heater - Faulty | 2026-06-08T10:00 | 2026-06-11T09:00 |
| 22.3 | Testing of EPBs in Control room | 2026-06-04T07:00 | 2026-06-04T11:58 |
| 22.4 | Install Panel heater | 2026-06-03T19:00 | 2026-06-04T01:00 |
| 22.5 | AF1UBE27GY001 | 2026-06-03T19:00 | 2026-06-03T22:00 |
| 22.6 | AF1UBE31GY001 | 2026-06-03T22:00 | 2026-06-04T01:00 |
| 23 | Solar Field Correctives | 2026-06-01T07:00 | 2026-06-19T07:00 |
| 23.1 | Main pipe structure damage - B44 | 2026-06-09T07:00 | 2026-06-11T07:00 |
| 23.2 | Structural damage - F22 | 2026-06-11T07:00 | 2026-06-13T07:00 |
| 23.3 | Rotate drive axis | 2026-06-13T07:00 | 2026-06-19T07:00 |
| 23.4 | Hydraulic Power Unit Maintenance | 2026-06-02T07:00 | 2026-06-11T15:00 |
| 23.5 | Calibration 10% of Solar Field | 2026-06-03T07:00 | 2026-06-12T16:00 |
| 23.6 | Graphite | 2026-06-01T07:00 | 2026-06-10T16:00 |
| 24 | XINA EVAPORATOR 1&2 Repairs | 2026-05-24T07:00 | 2026-06-30T17:01 |
| 24.1 | Mobilze Team | 2026-05-24T07:00 | 2026-06-01T07:01 |
| 24.2 | Site Works | 2026-05-26T14:01 | 2026-06-28T14:01 |
| 24.3 | Erect external Scaffolding - By Client | 2026-05-26T14:01 | 2026-05-29T14:01 |
| 24.4 | Site Preparation | 2026-05-29T14:01 | 2026-06-02T11:03 |
| 24.5 | Install Spark containment | 2026-05-29T14:01 | 2026-05-30T10:01 |
| 24.6 | Receive permit to work | 2026-05-30T10:01 | 2026-06-02T11:03 |

| ID | Task | Start | Finish |
| --- | --- | --- | --- |
| 24.7 | Unit 1 | 2026-06-05T07:00 | 2026-06-28T14:01 |
| 24.8 | Shell repairs no 1 - 110mm long NS | 2026-06-05T07:00 | 2026-06-22T11:04 |
| 24.9 | Shell repairs no 2 - 112mm long NS | 2026-06-05T08:00 | 2026-06-19T15:00 |
| 24.10 | Shell repairs no 3 - 14mm long NS | 2026-06-05T07:00 | 2026-06-19T15:00 |
| 24.11 | Shell repairs no 4 - 148mm long NS | 2026-06-05T07:00 | 2026-06-19T15:00 |
| 24.12 | Shell repairs no 5 - 129mm long NS | 2026-06-05T08:00 | 2026-06-21T14:01 |
| 24.13 | Shell repairs no 6 - 115mm long SS | 2026-06-05T07:00 | 2026-06-26T15:00 |
| 24.14 | Shell repairs no 7 - 159mm long SS | 2026-06-05T08:00 | 2026-06-28T14:01 |
| 24.15 | Unit 2 | 2026-06-02T11:03 | 2026-06-25T07:03 |
| 24.16 | Removal of existing Support | 2026-06-02T11:03 | 2026-06-11T09:00 |
| 24.17 | Remove welding for existing support | 2026-06-02T11:03 | 2026-06-05T11:03 |
| 24.18 | Install new temp support | 2026-06-03T08:00 | 2026-06-09T16:00 |
| 24.19 | Shell repairs (Unit 2) | 2026-06-09T16:02 | 2026-06-22T01:03 |
| 24.20 | Pedestal Replacement | 2026-06-22T01:03 | 2026-06-25T07:03 |
| 24.21 | Close Out | 2026-06-28T14:01 | 2026-06-30T17:01 |
| 24.22 | Do final punching and inspections | 2026-06-28T14:01 | 2026-06-29T16:01 |
| 24.23 | Issue COR | 2026-06-28T14:01 | 2026-06-29T16:01 |
| 24.24 | Unit Start Date | 2026-06-29T16:01 | 2026-06-30T17:01 |

## Version 2 (saved 2026-06-13)

Note of the change: Update outage data · 2026-06-13T16:55:17.164Z

Last finish stays 2026-06-30.

Added:

| ID | Task | Start | Finish |
| --- | --- | --- | --- |
| 25 | Envirotech | 2026-06-08T16:22 | 2026-06-14T16:23 |

## Version 3 (saved 2026-06-14)

Note of the change: Update outage data · 2026-06-14T14:58:06.487Z

Last finish stays 2026-06-30.

Added:

| ID | Task | Start | Finish |
| --- | --- | --- | --- |
| 26 | Baymond | 2026-06-08T07:13 | 2026-06-15T07:13 |

## Version 4 (saved 2026-06-17)

Note of the change: Update outage data · 2026-06-17T13:19:28.272Z

Last finish stays 2026-06-30.

Added:

| ID | Task | Start | Finish |
| --- | --- | --- | --- |
| 20.15 | Removal and replace of MHTFP 31 bellows | 2026-06-17T09:45 | 2026-06-30T09:45 |
| 27 | Pezula - Scaffolding Insulation | 2026-06-01T15:19 | 2026-06-30T15:19 |

## Version 5 (saved 2026-06-21)

Note of the change: Update outage data · 2026-06-21T17:26:49.792Z

Last finish stays 2026-06-30.

Removed: 8.2 Open Manhole for inspections; 8.5 Inspections and repairs; 8.6 Transport to site; 8.7 Replace; 8.8 Recovery
